# Office Move

Schedule from MS Project, 2004-01-01 to 2004-06-25.

## Calendars

- Standard: Mon-Fri 08:00-12:00, 13:00-17:00; Sat-Sun off.

## Resources

| Resource |
| --- |
| Chief relocation officer |
| Office manager |
| Telecommunications administrator |
| Network support manager |
| Mailroom administrator |
| Environmental engineer |
| Accounting manager |
| Local phone company |
| Cleaning service |
| Webmaster |
| Movers |

## Schedule

| ID | WBS | Task | Type | Duration | Start | Finish | Predecessors | Total slack | Free slack | Resources | Work |
| --- | --- | --- | --- | --- | --- | --- | --- | --- | --- | --- | --- |
| 1 | 1 | **Office Move** |  | 127d | 2004-01-01 | 2004-06-25 |  | 0d |  |  | 2192h |
| 2 | 1.1 | **Two To Six Months Before Moving Day** |  | 77d | 2004-01-01 | 2004-04-16 |  | 0d |  |  | 816h |
| 3 | 1.1.1 | Make list of key needs that must be met by new office space |  | 7d | 2004-01-01 | 2004-01-09 |  | 0d |  | Chief relocation officer | 56h |
| 4 | 1.1.2 | Identify potential office sites |  | 20d | 2004-01-12 | 2004-02-06 | 3 | 0d |  | Chief relocation officer | 160h |
| 5 | 1.1.3 | Make final decision on office space |  | 10d | 2004-02-09 | 2004-02-20 | 4 | 0d |  | Chief relocation officer | 80h |
| 6 | 1.1.4 | Finalize lease on office space |  | 10d | 2004-02-23 | 2004-03-05 | 5 | 0d |  | Chief relocation officer | 80h |
| 7 | 1.1.5 | Identify major tenant improvement needs |  | 15d | 2004-03-08 | 2004-03-26 | 6 | 0d |  | Office manager | 120h |
| 8 | 1.1.6 | Obtain estimates from contractors for major tenant improvements |  | 5d | 2004-03-29 | 2004-04-02 | 7 | 0d |  | Office manager | 40h |
| 9 | 1.1.7 | Identify costs for new office (chairs, desks, equipment) |  | 10d | 2004-02-23 | 2004-03-05 | 5 | 20d | 0d | Chief relocation officer | 80h |
| 10 | 1.1.8 | Prepare a budget for the move |  | 10d | 2004-03-08 | 2004-03-19 | 9 | 20d |  | Chief relocation officer | 80h |
| 11 | 1.1.9 | Select the move day |  | 1d | 2004-03-08 | 2004-03-08 | 6 | 29d |  | Chief relocation officer | 8h |
| 12 | 1.1.10 | Hire contractors for major tenant improvements |  | 5d | 2004-04-05 | 2004-04-09 | 8 | 0d |  | Office manager | 40h |
| 13 | 1.1.11 | Obtain necessary permits |  | 5d | 2004-04-12 | 2004-04-16 | 12 | 0d |  | Chief relocation officer | 40h |
| 14 | 1.1.12 | Evaluate phone system needs |  | 1d | 2004-03-08 | 2004-03-08 | 6 | 29d |  | Telecommunications administrator | 8h |
| 15 | 1.1.13 | Order new phone number |  | 1d | 2004-03-08 | 2004-03-08 | 6 | 29d |  | Telecommunications administrator | 8h |
| 16 | 1.1.14 | Order new fax number |  | 1d | 2004-03-08 | 2004-03-08 | 6 | 29d |  | Telecommunications administrator | 8h |
| 17 | 1.1.15 | Communicate to employees |  | 1d | 2004-03-08 | 2004-03-08 | 6 | 29d |  | Chief relocation officer | 8h |
| 18 | 1.1.16 | Phase one closeout | milestone | 0d | 2004-04-16 | 2004-04-16 | 3, 4, 5, 6, 7, 8, 9, 10, 11, 12, 13, 14, 15, 16, 17 | 0d |  |  |  |
| 19 | 1.2 | **One To Two Months Before Moving Day** |  | 28d | 2004-04-19 | 2004-05-26 |  | 0d |  |  | 536h |
| 20 | 1.2.1 | Design office space |  | 23d | 2004-04-19 | 2004-05-19 | 18 | 0d |  | Office manager | 184h |
| 21 | 1.2.2 | Assign office space |  | 5d | 2004-05-20 | 2004-05-26 | 20 | 0d |  | Office manager | 40h |
| 22 | 1.2.3 | Order chairs |  | 1d | 2004-05-20 | 2004-05-20 | 20 | 4d |  | Office manager | 8h |
| 23 | 1.2.4 | Order desks |  | 1d | 2004-05-20 | 2004-05-20 | 20 | 4d |  | Office manager | 8h |
| 24 | 1.2.5 | Order systems furniture |  | 1d | 2004-05-20 | 2004-05-20 | 20 | 4d |  | Network support manager | 8h |
| 25 | 1.2.6 | Order new office equipment |  | 1d | 2004-05-20 | 2004-05-20 | 20 | 4d |  | Office manager | 8h |
| 26 | 1.2.7 | Obtain estimates from moving companies |  | 12d | 2004-04-19 | 2004-05-04 | 18 | 8d | 0d | Chief relocation officer | 96h |
| 27 | 1.2.8 | Hire movers |  | 1d | 2004-05-05 | 2004-05-05 | 26 | 15d |  | Chief relocation officer | 8h |
| 28 | 1.2.9 | Evaluate server room needs |  | 2d | 2004-05-20 | 2004-05-21 | 20 | 3d |  | Network support manager | 16h |
| 29 | 1.2.10 | Evaluate computer networking needs |  | 2d | 2004-05-20 | 2004-05-21 | 20 | 3d |  | Network support manager | 16h |
| 30 | 1.2.11 | Order change of address labels for notification |  | 1d | 2004-05-05 | 2004-05-05 | 26 | 15d |  | Mailroom administrator | 8h |
| 31 | 1.2.12 | Order new address labels for notification |  | 1d | 2004-05-05 | 2004-05-05 | 26 | 15d |  | Mailroom administrator | 8h |
| 32 | 1.2.13 | Obtain estimates from signage companies |  | 7d | 2004-05-05 | 2004-05-13 | 26 | 8d | 0d | Office manager | 56h |
| 33 | 1.2.14 | Order signage for new location |  | 1d | 2004-05-14 | 2004-05-14 | 32 | 8d |  | Office manager | 8h |
| 34 | 1.2.15 | Order phone system |  | 1d | 2004-05-20 | 2004-05-20 | 20 | 3d | 0d | Telecommunications administrator | 8h |
| 35 | 1.2.16 | Order phone lines |  | 1d | 2004-05-21 | 2004-05-21 | 34 | 3d |  | Telecommunications administrator | 8h |
| 36 | 1.2.17 | Order internet phone lines |  | 1d | 2004-05-21 | 2004-05-21 | 34 | 3d |  | Network support manager | 8h |
| 37 | 1.2.18 | Arrange internal maintenance service |  | 1d | 2004-05-14 | 2004-05-14 | 32 | 8d |  | Environmental engineer | 8h |
| 38 | 1.2.19 | Arrange external maintenance service |  | 1d | 2004-05-14 | 2004-05-14 | 32 | 8d |  | Environmental engineer | 8h |
| 39 | 1.2.20 | Arrange for trash disposal |  | 1d | 2004-05-14 | 2004-05-14 | 32 | 8d |  | Office manager | 8h |
| 40 | 1.2.21 | Arrange for cleaning service |  | 1d | 2004-05-14 | 2004-05-14 | 32 | 8d |  | Office manager | 8h |
| 41 | 1.2.22 | Arrange for recycling |  | 1d | 2004-05-14 | 2004-05-14 | 32 | 8d |  | Office manager | 8h |
| 42 | 1.2.23 | Phase two closeout | milestone | 0d | 2004-05-26 | 2004-05-26 | 20, 21, 22, 23, 24, 25, 26, 27, 28, 29, 30, 31, 32, 33, 34, 35, 36, 37, 38, 39, 40, 41 | 0d |  |  |  |

Notes:
- 3: Assemble a relocation team to assist in this task. The team should represent the various departments in your organization.
- 6: Ensure that your corporate attorney reviews all documents associated with the lease. This review may take some time, but is a critical step.
- 7: Get input from the various departments by preparing a standard feedback form for department heads and asking them to turn it in by a specific date.

| ID | WBS | Task | Type | Duration | Start | Finish | Predecessors | Total slack | Free slack | Resources | Work |
| --- | --- | --- | --- | --- | --- | --- | --- | --- | --- | --- | --- |
| 43 | 1.3 | **Two To Four Weeks Before Moving Day** |  | 10d | 2004-05-27 | 2004-06-09 |  | 0d |  |  | 224h |
| 44 | 1.3.1 | Appraise assets being transferred to new location |  | 3d | 2004-05-27 | 2004-05-31 | 42 | 0d |  | Accounting manager | 24h |
| 45 | 1.3.2 | Get business insurance quotes for new space |  | 6d | 2004-06-01 | 2004-06-08 | 44 | 0d |  | Office manager | 48h |
| 46 | 1.3.3 | Purchase insurance for new space |  | 1d | 2004-06-09 | 2004-06-09 | 45 | 0d |  | Office manager | 8h |
| 47 | 1.3.4 | Order security system |  | 1d | 2004-05-27 | 2004-05-27 | 42 | 9d |  | Office manager | 8h |
| 48 | 1.3.5 | Order keys, access cards |  | 1d | 2004-05-27 | 2004-05-27 | 42 | 9d |  | Office manager | 8h |
| 49 | 1.3.6 | Arrange for beverage service |  | 1d | 2004-05-27 | 2004-05-27 | 42 | 9d |  | Office manager | 8h |
| 50 | 1.3.7 | Send change of address to all vendors |  | 1d | 2004-05-27 | 2004-05-27 | 42 | 9d |  | Mailroom administrator | 8h |
| 51 | 1.3.8 | Send change of address to all customers |  | 1d | 2004-05-27 | 2004-05-27 | 42 | 9d |  | Mailroom administrator | 8h |
| 52 | 1.3.9 | Send change of address to all subscriptions |  | 1d | 2004-05-27 | 2004-05-27 | 42 | 9d |  | Mailroom administrator | 8h |
| 53 | 1.3.10 | Notify all leasers of equipment move |  | 1d | 2004-05-27 | 2004-05-27 | 42 | 9d |  | Office manager | 8h |
| 54 | 1.3.11 | Order checks with new address |  | 1d | 2004-05-27 | 2004-05-27 | 42 | 9d |  | Office manager | 8h |
| 55 | 1.3.12 | Order long-distance service |  | 1d | 2004-05-27 | 2004-05-27 | 42 | 9d |  | Telecommunications administrator | 8h |
| 56 | 1.3.13 | Transfer toll-free numbers or order new numbers |  | 1d | 2004-05-27 | 2004-05-27 | 42 | 9d |  | Telecommunications administrator | 8h |
| 57 | 1.3.14 | Plan for disposal of old office equipment |  | 3d | 2004-05-27 | 2004-05-31 | 42 | 7d |  | Office manager | 24h |
| 58 | 1.3.15 | Dispose of old office equipment |  | 1d | 2004-05-27 | 2004-05-27 | 42 | 9d |  | Office manager | 8h |
| 59 | 1.3.16 | Plan for disposal of old office furniture |  | 3d | 2004-05-27 | 2004-05-31 | 42 | 7d |  | Office manager | 24h |
| 60 | 1.3.17 | Dispose of old office furniture |  | 1d | 2004-05-27 | 2004-05-27 | 42 | 9d |  | Office manager | 8h |
| 61 | 1.3.18 | Phase three closeout | milestone | 0d | 2004-06-09 | 2004-06-09 | 44, 45, 46, 47, 48, 49, 50, 51, 52, 53, 54, 55, 56, 57, 58, 59, 60 | 0d |  |  |  |
| 62 | 1.4 | **One Day To Two Weeks Before Moving Day** |  | 10d | 2004-06-10 | 2004-06-23 |  | 0d |  |  | 536h |
| 63 | 1.4.1 | Install phone lines |  | 1d | 2004-06-10 | 2004-06-10 | 61 | 2d | 0d | Local phone company | 8h |
| 64 | 1.4.2 | Install phone system |  | 4d | 2004-06-11 | 2004-06-16 | 63 | 2d | 0d | Telecommunications administrator | 32h |
| 65 | 1.4.3 | Assign new phone numbers, extensions |  | 2d | 2004-06-17 | 2004-06-18 | 64 | 2d | 0d | Telecommunications administrator | 16h |
| 66 | 1.4.4 | Order new letterhead and envelopes |  | 1d | 2004-06-10 | 2004-06-10 | 61 | 9d |  | Office manager | 8h |
| 67 | 1.4.5 | Order new business cards |  | 1d | 2004-06-10 | 2004-06-10 | 61 | 9d |  | Office manager | 8h |
| 68 | 1.4.6 | Order new business forms |  | 1d | 2004-06-10 | 2004-06-10 | 61 | 9d |  | Office manager | 8h |
| 69 | 1.4.7 | Schedule disconnection of utilities |  | 1d | 2004-06-10 | 2004-06-10 | 61 | 9d |  | Office manager | 8h |
| 70 | 1.4.8 | Repair new office |  | 1d | 2004-06-10 | 2004-06-10 | 61 | 9d |  | Environmental engineer | 8h |
| 71 | 1.4.9 | Clean new office |  | 1d | 2004-06-10 | 2004-06-10 | 61 | 9d |  | Cleaning service | 8h |
| 72 | 1.4.10 | Identify closest overnight drop off boxes |  | 1d | 2004-06-10 | 2004-06-10 | 61 | 9d |  | Mailroom administrator | 8h |
| 73 | 1.4.11 | Inventory existing office furniture (general) |  | 5d | 2004-06-10 | 2004-06-16 | 61 | 5d |  | Office manager | 40h |
| 74 | 1.4.12 | Inventory existing computers |  | 5d | 2004-06-10 | 2004-06-16 | 61 | 5d |  | Network support manager | 40h |
| 75 | 1.4.13 | Inventory existing furniture by office |  | 5d | 2004-06-10 | 2004-06-16 | 61 | 5d |  | Office manager | 40h |
| 76 | 1.4.14 | Shred documents |  | 1d | 2004-06-10 | 2004-06-10 | 61 | 9d |  | Office manager | 8h |
| 77 | 1.4.15 | Purge old, obsolete materials |  | 1d | 2004-06-10 | 2004-06-10 | 61 | 9d |  | Office manager | 8h |
| 78 | 1.4.16 | Create new office extension directory |  | 1d | 2004-06-21 | 2004-06-21 | 65 | 2d |  | Telecommunications administrator | 8h |
| 79 | 1.4.17 | Create new office layout map |  | 1d | 2004-06-10 | 2004-06-10 | 61 | 9d |  | Office manager | 8h |
| 80 | 1.4.18 | Create new fax cover sheet |  | 1d | 2004-06-10 | 2004-06-10 | 61 | 9d |  | Office manager | 8h |
| 81 | 1.4.19 | Create driving instructions to new location for employees |  | 1d | 2004-06-10 | 2004-06-10 | 61 | 9d |  | Office manager | 8h |
| 82 | 1.4.20 | Obtain public transportation information for new location |  | 1d | 2004-06-10 | 2004-06-10 | 61 | 9d |  | Office manager | 8h |
| 83 | 1.4.21 | Get shipping labels |  | 1d | 2004-06-10 | 2004-06-10 | 61 | 9d |  | Mailroom administrator | 8h |
| 84 | 1.4.22 | Notify post office of change of address |  | 1d | 2004-06-10 | 2004-06-10 | 61 | 9d |  | Mailroom administrator | 8h |
| 85 | 1.4.23 | Update company website with new information |  | 1d | 2004-06-10 | 2004-06-10 | 61 | 9d |  | Webmaster | 8h |
| 86 | 1.4.24 | Order moving boxes |  | 1d | 2004-06-10 | 2004-06-10 | 61 | 9d |  | Mailroom administrator | 8h |
| 87 | 1.4.25 | Pack up desks, personal spaces |  | 5d | 2004-06-10 | 2004-06-16 | 61 | 0d |  | Movers | 40h |
| 88 | 1.4.26 | Pack up common areas |  | 5d | 2004-06-10 | 2004-06-16 | 61 | 3d | 0d | Movers | 40h |
| 89 | 1.4.27 | Label all fragile items |  | 1d | 2004-06-10 | 2004-06-10 | 61 | 9d |  | Office manager | 8h |
| 90 | 1.4.28 | Take down systems furniture |  | 2d | 2004-06-17 | 2004-06-18 | 87 | 0d |  | Network support manager | 16h |
| 91 | 1.4.29 | Store property that will not be moved |  | 1d | 2004-06-17 | 2004-06-17 | 87, 88 | 4d |  | Movers | 8h |
| 92 | 1.4.30 | Label furniture to be moved |  | 2d | 2004-06-17 | 2004-06-18 | 87, 88 | 3d |  | Office manager | 16h |
| 93 | 1.4.31 | Move to central location |  | 1d | 2004-06-17 | 2004-06-17 | 87, 88 | 4d |  | Office manager | 8h |
| 94 | 1.4.32 | Install systems furniture at new location |  | 3d | 2004-06-21 | 2004-06-23 | 90 | 0d |  | Network support manager | 24h |
| 95 | 1.4.33 | Install network wiring at new location |  | 2d | 2004-06-10 | 2004-06-11 | 61 | 8d |  | Network support manager | 16h |
| 96 | 1.4.34 | Distribute new keys, cards |  | 1d | 2004-06-10 | 2004-06-10 | 61 | 9d |  | Office manager | 8h |
| 97 | 1.4.35 | Collect old keys, cards |  | 1d | 2004-06-10 | 2004-06-10 | 61 | 9d |  | Office manager | 8h |
| 98 | 1.4.36 | Empty, defrost and clean refrigerator |  | 1d | 2004-06-10 | 2004-06-10 | 61 | 9d |  | Cleaning service | 8h |
| 99 | 1.4.37 | Code new office space on a map for movers |  | 1d | 2004-06-10 | 2004-06-10 | 61 | 9d |  | Office manager | 8h |
| 100 | 1.4.38 | Create a moving day team to provide direction to movers |  | 1d | 2004-06-10 | 2004-06-10 | 61 | 9d |  | Chief relocation officer | 8h |
| 101 | 1.4.39 | Phase four closeout | milestone | 0d | 2004-06-23 | 2004-06-23 | 63, 64, 65, 66, 67, 68, 69, 70, 71, 72, 73, 74, 75, 76, 77, 78, 79, 80, 81, 82, 83, 84, 85, 86, 87, 88, 89, 90, 91, 92, 93, 94, 95, 96, 97, 98, 99, 100 | 0d |  |  |  |

Notes:
- 57: Your company may want to consider holding an auction for employees.
- 59: Your company may want to consider holding an auction for employees.
- 100: The moving day team may want to consider wearing the same shirts on move day or wearing name tags or other identification that will help the movers to locate them quickly.

| ID | WBS | Task | Type | Duration | Start | Finish | Predecessors | Total slack | Resources | Work |
| --- | --- | --- | --- | --- | --- | --- | --- | --- | --- | --- |
| 102 | 1.5 | **Moving Day** |  | 1d | 2004-06-24 | 2004-06-24 |  | 0d |  | 32h |
| 103 | 1.5.1 | Post coded signs in new office for movers |  | 1d | 2004-06-24 | 2004-06-24 | 101 | 0d | Office manager | 8h |
| 104 | 1.5.2 | Put moving day team in place |  | 1d | 2004-06-24 | 2004-06-24 | 101 | 0d | Chief relocation officer | 8h |
| 105 | 1.5.3 | Protect main moving paths |  | 1d | 2004-06-24 | 2004-06-24 | 101 | 0d | Office manager | 8h |
| 106 | 1.5.4 | Move plants and fine art in separate moving van |  | 1d | 2004-06-24 | 2004-06-24 | 101 | 0d | Movers | 8h |
| 107 | 1.5.5 | Physical move complete | milestone | 0d | 2004-06-24 | 2004-06-24 | 103, 104, 105, 106 | 0d |  |  |
| 108 | 1.6 | **Post-Move** |  | 1d | 2004-06-25 | 2004-06-25 |  | 0d |  | 48h |
| 109 | 1.6.1 | Check carefully for any damaged or missing items |  | 1d | 2004-06-25 | 2004-06-25 | 107 | 0d | Office manager | 8h |
| 110 | 1.6.2 | Schedule phone training |  | 1d | 2004-06-25 | 2004-06-25 | 107 | 0d | Telecommunications administrator | 8h |
| 111 | 1.6.3 | Schedule security training |  | 1d | 2004-06-25 | 2004-06-25 | 107 | 0d | Office manager | 8h |
| 112 | 1.6.4 | Schedule fire drill |  | 1d | 2004-06-25 | 2004-06-25 | 107 | 0d | Office manager | 8h |
| 113 | 1.6.5 | Periodically visit old office to pick up mail |  | 1d | 2004-06-25 | 2004-06-25 | 107 | 0d | Mailroom administrator | 8h |
| 114 | 1.6.6 | Schedule open house for clients |  | 1d | 2004-06-25 | 2004-06-25 | 107 | 0d | Chief relocation officer | 8h |
| 115 | 1.6.7 | Office move project complete | milestone | 0d | 2004-06-25 | 2004-06-25 | 18, 42, 61, 101, 107, 109, 110, 111, 112, 113, 114 | 0d |  |  |
